# MS-Projet_file

Schedule from MS Project, 2021-10-11 to 2022-01-12, costs in $, A marks actual dates.

## Calendars

- Standard: Mon-Fri 08:00-12:00, 13:00-17:00; Sat-Sun off.

## Resources

| Resource | Rate |
| --- | --- |
| Project Manager | 38 |
| QA | 20 |
| Structure Architech | 40 |
| UI/UX Designer | 30 |
| Test Lead | 30 |
| Developer | 25 |
| Tester | 20 |
| Physical Database | 200 |
| Test Software Licenses |  |
| Hosting | 1300 |
| Domain | 700 |

## Schedule

| ID | WBS | Task | Type | Duration | Start | Finish | Predecessors | Complete | Remaining | Total slack | Free slack | Constraint | Resources | Work | Actual work | Cost | Actual cost |
| --- | --- | --- | --- | --- | --- | --- | --- | --- | --- | --- | --- | --- | --- | --- | --- | --- | --- |
| 1 | 1 | **The whole project** |  | 68d | 2021-10-11 A | 2022-01-12 |  | 64% | 24.54d | 0d |  |  |  | 840h | 496h | 28,790 | 15,752 |
| 2 | 1.1 | **Initiation and Planning** |  | 9d | 2021-10-11 A | 2021-10-21 |  | 99% | 0d | 59d |  |  |  | 72h | 72h | 2,736 | 2,736 |
| 3 | 1.1.1 | Evaluation and Recommendations | milestone | 0d | 2021-10-11 A | 2021-10-11 A |  | 100% |  |  |  | finish no earlier than 2021-10-11 | Project Manager |  |  |  |  |
| 4 | 1.1.2 | Develop Project Charter |  | 1d | 2021-10-11 A | 2021-10-11 A | 3 | 100% |  |  |  |  | Project Manager | 8h | 8h | 304 | 304 |
| 5 | 1.1.3 | Submit Project Charter | milestone | 0d | 2021-10-11 A | 2021-10-11 A | 4 | 100% |  |  |  |  | Project Manager |  |  |  |  |
| 6 | 1.1.4 | Create Sponsor Review Charter |  | 1d | 2021-10-12 A | 2021-10-12 A |  | 100% |  |  |  |  | Project Manager | 8h | 8h | 304 | 304 |
| 7 | 1.1.5 | Sign Project Charter |  | 1d | 2021-10-15 A | 2021-10-15 A | 5 | 100% |  |  |  |  | Project Manager | 8h | 8h | 304 | 304 |
| 8 | 1.1.6 | Create Scope Statement |  | 1d | 2021-10-13 A | 2021-10-13 A |  | 100% |  |  |  |  | Project Manager | 8h | 8h | 304 | 304 |
| 9 | 1.1.7 | Determine Project Team |  | 1d | 2021-10-14 A | 2021-10-14 A |  | 100% |  |  |  |  | Project Manager | 8h | 8h | 304 | 304 |
| 10 | 1.1.8 | Kickoff Meeting |  | 1d | 2021-10-21 A | 2021-10-21 A | 9FS+1d | 100% |  |  |  |  | Project Manager | 8h | 8h | 304 | 304 |
| 11 | 1.1.9 | Develop Project Plan |  | 3d | 2021-10-18 A | 2021-10-20 A | 6, 7, 9, 8 | 100% |  |  |  |  | Project Manager | 24h | 24h | 912 | 912 |
| 12 | 1.1.10 | Submit Project Plan | milestone | 0d | 2021-10-20 | 2021-10-20 | 11 |  |  | 60d | 0d |  | Project Manager |  |  |  |  |
| 13 | 1.1.11 | Approve Project Plan | milestone | 0d | 2021-10-20 | 2021-10-20 | 12 |  |  | 60d |  |  | Project Manager |  |  |  |  |
| 14 | 1.2 | **Execution** |  | 42d | 2021-10-25 A | 2021-12-21 |  | 74% | 11.08d | 0d |  |  |  | 640h | 424h | 21,190 | 13,016 |
| 15 | 1.2.1 | Execution-phase Kickoff Meeting |  | 1d | 2021-10-25 A | 2021-10-25 A | 13 | 100% |  |  |  |  | Project Manager | 8h | 8h | 304 | 304 |
| 16 | 1.2.2 | Validate User Requirements |  | 3d | 2021-10-26 A | 2021-10-28 A | 15 | 100% |  |  |  |  | QA | 24h | 24h | 480 | 480 |
| 17 | 1.2.3 | Design DB Structure |  | 3d | 2021-11-10 A | 2021-11-12 A | 16 | 100% |  |  |  |  | Structure Architech | 24h | 24h | 960 | 960 |
| 18 | 1.2.4 | Design Detailed DB |  | 2d | 2021-11-15 A | 2021-11-16 A | 17 | 100% |  |  |  |  | Structure Architech | 16h | 16h | 640 | 640 |
| 19 | 1.2.5 | Design Overview Functional Software Structure |  | 1w | 2021-10-29 A | 2021-11-04 A | 16 | 100% |  |  |  |  | Structure Architech | 40h | 40h | 1,600 | 1,600 |
| 20 | 1.2.6 | Design Detailed Functional Components |  | 3d | 2021-11-05 A | 2021-11-09 A | 19 | 100% |  |  |  |  | Structure Architech | 24h | 24h | 960 | 960 |
| 21 | 1.2.7 | Design UI/UX |  | 3d | 2021-10-29 A | 2021-11-02 A | 16 | 100% |  |  |  |  | UI/UX Designer | 24h | 24h | 720 | 720 |
| 22 | 1.2.8 | Plan Test |  | 2d | 2021-10-29 A | 2021-11-01 A | 16 | 100% |  |  |  |  | Test Lead | 16h | 16h | 480 | 480 |
| 23 | 1.2.9 | Design Test |  | 3d | 2021-11-02 A | 2021-11-04 A | 22 | 100% |  |  |  |  | Test Lead | 24h | 24h | 720 | 720 |
| 24 | 1.2.10 | Procure Software |  | 1d | 2021-11-19 A | 2021-11-19 A | 18, 20, 21 | 100% |  |  |  |  | Project Manager | 8h | 8h | 304 | 304 |
| 25 | 1.2.11 | Procure Hardware Specs |  | 2d | 2021-11-17 A | 2021-11-18 A | 18, 20, 21 | 100% |  |  |  |  | Project Manager; Physical Database | 16h | 16h | 808 | 808 |
| 26 | 1.2.12 | Develop Database |  | 3d | 2021-11-17 A | 2021-11-19 A | 18 | 100% |  |  |  |  | Developer | 24h | 24h | 600 | 600 |
| 27 | 1.2.13 | Develop Functions |  | 1w | 2021-11-10 A | 2021-11-16 A | 20 | 100% |  |  |  |  | Developer | 40h | 40h | 1,000 | 1,000 |
| 28 | 1.2.14 | Develop UI/UX |  | 1w | 2021-11-03 A | 2021-11-09 A | 21 | 100% |  |  |  |  | Developer | 40h | 40h | 1,000 | 1,000 |
| 29 | 1.2.15 | Install Development System |  | 3d | 2021-11-22 A | 2021-11-24 A | 26, 27, 28 | 100% |  |  |  |  | Developer; Physical Database [200%] | 24h | 24h | 1,000 | 1,000 |
| 30 | 1.2.16 | Test Database |  | 1d | 2021-11-22 A | 2021-11-22 A | 26 | 100% |  |  |  |  | Tester | 8h | 8h | 160 | 160 |
| 31 | 1.2.17 | Test Functions |  | 3d | 2021-11-17 A | 2021-11-19 A | 27 | 100% |  |  |  |  | Tester | 24h | 24h | 480 | 480 |
| 32 | 1.2.18 | Test UI/UX |  | 3d | 2021-11-10 A | 2021-11-12 A | 28 | 100% |  |  |  |  | Tester | 24h | 24h | 480 | 480 |
| 33 | 1.2.19 | Summarize Test Result |  | 2d | 2021-11-23 A | 2021-11-29 A | 30, 31, 32 | 100% |  |  |  |  | Tester; Test Software Licenses [0.1%] | 16h | 16h | 470 | 320 |
| 34 | 1.2.20 | Update UI | manual | 3d | 2021-12-06 | 2021-12-08 | 33 |  |  |  |  |  | Developer; UI/UX Designer | 48h |  | 1,320 |  |
| 35 | 1.2.21 | Refactor logic code | manual | 4d | 2021-12-06 | 2021-12-09 | 33 |  |  |  |  |  | Developer | 32h |  | 800 |  |
| 36 | 1.2.22 | Fix Bugs |  | 1w | 2021-11-30 | 2021-12-10 | 33 |  |  | 0d |  |  | Developer; Tester | 80h |  | 1,800 |  |
| 37 | 1.2.23 | Setup Deployment |  | 3d | 2021-12-13 | 2021-12-15 | 36 |  |  | 0d |  |  | Developer; Hosting | 24h |  | 1,900 |  |
| 38 | 1.2.24 | Deploy System |  | 3d | 2021-12-16 | 2021-12-20 | 37 |  |  | 0d |  |  | Developer; Hosting | 24h |  | 1,900 |  |
| 39 | 1.2.25 | Project Status Meetings |  | 1d | 2021-12-21 | 2021-12-21 | 38 |  |  | 0d |  |  | Project Manager | 8h |  | 304 |  |
| 40 | 1.3 | Summarize Risk |  | 3d | 2022-01-05 | 2022-01-07 | 39 |  |  | 3d |  |  | Project Manager | 24h |  | 912 |  |
| 41 | 1.4 | Create Update Plan |  | 1w | 2021-12-22 | 2021-12-28 | 39 |  |  | 0d |  |  | Project Manager | 40h |  | 1,520 |  |
| 42 | 1.5 | Procure Audit |  | 1d | 2021-12-29 | 2021-12-29 | 41 |  |  | 0d |  |  | Project Manager | 8h |  | 304 |  |
| 43 | 1.6 | Create Lessons Learned Document |  | 3d | 2022-01-10 | 2022-01-12 | 42 |  |  | 0d |  |  | Project Manager | 24h |  | 912 |  |
| 44 | 1.7 | Update Files/Records |  | 3d | 2021-12-30 | 2022-01-03 | 38 |  |  | 6d | 0d |  | Project Manager | 24h |  | 912 |  |
| 45 | 1.8 | Gain Formal Acceptance | milestone | 0d | 2021-12-20 | 2021-12-20 | 38 |  |  | 17d |  |  | Project Manager |  |  |  |  |
| 46 | 1.9 | Archive Files and Documents |  | 1d | 2022-01-04 | 2022-01-04 | 44 |  |  | 6d |  |  | Project Manager | 8h |  | 304 |  |
